# Projeto ABC

Schedule from ProjectLibre, 2019-10-25 to 2020-09-24.

## Calendars

- Padrão: Mon-Fri 08:00-12:00, 13:00-17:00; Sat-Sun off. Exceptions (off unless hours are given): 2019-11-14 to 2019-11-15.

## Resources

| Resource |
| --- |
| Não atribuído |

## Schedule

| ID | WBS | Task | Duration | Start | Finish | Predecessors | Constraint |
| --- | --- | --- | --- | --- | --- | --- | --- |
| 1 | 1 | **1. Projeto ABC** | 239d | 2019-10-25 | 2020-09-24 |  |  |
| 2 | 1.1 | **1.1. Engenharia** | 29d | 2019-10-25 | 2019-12-05 |  |  |
| 3 | 1.1.1 | **1.1.1. Projetos Civis** | 29d | 2019-10-25 | 2019-12-05 |  |  |
| 4 | 1.1.1.1 | 1.1.1.1 Projeto de Fundação | 6d | 2019-10-25 | 2019-11-01 |  |  |
| 5 | 1.1.1.2 | 1.1.1.2. Projeto de Superestrutura | 6d | 2019-11-04 | 2019-11-11 | 4 |  |
| 6 | 1.1.1.3 | 1.1.1.3. Projeto Arquitetônico | 20d | 2019-11-07 | 2019-12-05 | 5SS+3d | start no earlier than 2019-10-25 |
| 7 | 1.1.2 | **1.1.2. Projeto de Instalações** | 10d | 2019-11-19 | 2019-12-02 |  |  |
| 8 | 1.1.2.1 | 1.1.2.1. Projeto de Instalações Hidráulicas | 5d | 2019-11-19 | 2019-11-25 | 6SS+7d | start no earlier than 2019-10-25 |
| 9 | 1.1.2.2 | 1.1.2.2. Projeto de Instalações Elétricas | 6d | 2019-11-19 | 2019-11-26 | 8SS |  |
| 10 | 1.1.2.3 | 1.1.2.3. Projetos de Sistemas Telefônicos/Som | 4d | 2019-11-27 | 2019-12-02 | 9 |  |
| 11 | 1.2 | **1.2. Suprimentos** | 34d | 2019-12-11 | 2020-01-27 |  |  |
| 12 | 1.2.1 | **1.2.1. Materiais de Construção** | 30d | 2019-12-11 | 2020-01-21 |  |  |
| 13 | 1.2.1.1 | 1.2.1.1. Materiais para Fundações | 15d | 2019-12-17 | 2020-01-06 | 4FS+30d |  |
| 14 | 1.2.1.2 | 1.2.1.2. Materiais para Superestruturas | 15d | 2019-12-11 | 2019-12-31 | 5FS+20d |  |
| 15 | 1.2.1.3 | 1.2.1.3. Materiais para Arquitetura | 30d | 2019-12-11 | 2020-01-21 | 14SS |  |
| 16 | 1.2.2 | **1.2.2. Materiais para Instalações** | 20d | 2019-12-31 | 2020-01-27 |  |  |
| 17 | 1.2.2.1 | 1.2.2.1. Materiais para Instalações Hidráulicas | 7d | 2019-12-31 | 2020-01-08 | 8FS+25d |  |
| 18 | 1.2.2.2 | 1.2.2.2. Materiais para Instalações Elétricas | 7d | 2020-01-08 | 2020-01-16 | 9FS+30d |  |
| 19 | 1.2.2.3 | 1.2.2.3. Materiais para Sistemas Telefônicos/Som | 5d | 2020-01-21 | 2020-01-27 | 10FS+35d |  |
| 20 | 1.3 | **1.3. Construção Civil** | 149d | 2020-02-29 | 2020-09-24 |  |  |
| 21 | 1.3.1 | **1.3.1. Preliminares** | 22d | 2020-02-29 | 2020-03-31 |  |  |
| 22 | 1.3.1.1 | 1.3.1.1. Canteiro de Obras | 8d | 2020-02-29 | 2020-03-11 | 4SS+90d |  |
| 23 | 1.3.1.2 | 1.3.1.2. Locação de Obras | 10d | 2020-03-12 | 2020-03-25 | 22 |  |
| 24 | 1.3.1.3 | 1.3.1.3. Movimento de Terra | 4d | 2020-03-26 | 2020-03-31 | 23 |  |

| ID | WBS | Task | Duration | Start | Finish | Predecessors |
| --- | --- | --- | --- | --- | --- | --- |
| 25 | 1.3.2 | **1.3.2. Fundações** | 29d | 2020-04-01 | 2020-05-11 |  |
| 26 | 1.3.2.1 | 1.3.2.1. Estacas | 8d | 2020-04-01 | 2020-04-10 | 13FS+40d, 24 |
| 27 | 1.3.2.2 | 1.3.2.2. Blocos | 13d | 2020-04-13 | 2020-04-29 | 26 |
| 28 | 1.3.2.3 | 1.3.2.3. Vigas Baldrames | 8d | 2020-04-30 | 2020-05-11 | 27 |
| 29 | 1.3.3 | **1.3.3. Estruturas de Concreto** | 32d | 2020-06-02 | 2020-07-15 |  |
| 30 | 1.3.3.1 | 1.3.3.1. Colunas e Vigas | 12d | 2020-06-02 | 2020-06-17 | 28FS+15d |
| 31 | 1.3.3.2 | 1.3.3.2. Lajes de Concreto | 16d | 2020-06-24 | 2020-07-15 | 30FS+4d |
| 32 | 1.3.4 | 1.3.4. Alvenarias | 15d | 2020-06-29 | 2020-07-17 | 30FS+7d |
| 33 | 1.3.5 | 1.3.5. Cobertura | 29d | 2020-08-01 | 2020-09-10 | 32FS+10d |
| 34 | 1.3.6 | 1.3.6. Piso | 29d | 2020-07-20 | 2020-08-27 | 32 |
| 35 | 1.3.7 | 1.3.7. Revestimento | 25d | 2020-07-20 | 2020-08-21 | 34SS |
| 36 | 1.3.8 | 1.3.8. Esquadrias | 11d | 2020-08-03 | 2020-08-17 | 35SS+10d |
| 37 | 1.3.9 | 1.3.9. Pinturas | 26d | 2020-08-20 | 2020-09-24 | 36FS+2d |
| 38 | 1.4 | **1.4. Instalações** | 23d | 2020-07-22 | 2020-08-21 |  |
| 39 | 1.4.1 | 1.4.1. Instalações Hidráulicas | 23d | 2020-07-22 | 2020-08-21 | 35SS+2d |
| 40 | 1.4.2 | 1.4.2. Instalações Elétricas | 15d | 2020-08-03 | 2020-08-21 | 35SS+10d |
| 41 | 1.4.3 | 1.4.3. Instalações Telefônicas/Som | 15d | 2020-08-03 | 2020-08-21 | 40SS |
